# lidar

Schedule from MS Project, 2015-07-22 to 2016-10-24, A marks actual dates.

## Calendars

- 标准: Mon-Fri 08:00-12:00, 13:00-17:00; Sat-Sun off. Exceptions (off unless hours are given): 2015-09-06 08:00-12:00, 13:00-17:00, 2016-02-14 08:00-12:00, 13:00-17:00.

## Resources

| Resource |
| --- |
| 激光铲车项目 |
| plc |
| 加入plc控制器 |
| 驱动器连接 |
| plc控制器 |
| 驱动器连接数据 |
| 连接plc控制器 |
| 仇隽挺 |
| 陈新春 |
| 张邺 |
| 韩立芹 |
| 陈豪 |
| 潘力澜 |
| 陆亚辉 |
| 吴兵 |

## Schedule

| ID | WBS | Task | Type | Duration | Start | Finish | Predecessors | Complete | Constraint |
| --- | --- | --- | --- | --- | --- | --- | --- | --- | --- |
| 1 | 1 | **lidar_mrpt** |  | 24d | 2015-07-22 A | 2015-08-25 A |  | 100% |  |
| 2 | 1.1 | uwb_localization-test |  | 0.5d | 2015-07-22 A | 2015-07-22 A |  | 100% | start no earlier than 2015-07-22 |
| 3 | 1.2 | hokuyo_laser_scan |  | 2d | 2015-07-22 A | 2015-07-24 A |  | 100% | start no earlier than 2015-07-22 |
| 4 | 1.3 | communication-config |  | 1d | 2015-07-24 A | 2015-07-27 A | 3 | 100% | start no earlier than 2015-07-24 |
| 5 | 1.4 | mrpt-tutorial |  | 2d | 2015-07-27 A | 2015-07-29 A | 4 | 100% | start no earlier than 2015-07-27 |
| 6 | 1.5 | mrpt-slam |  | 8d | 2015-07-29 A | 2015-08-10 A | 5 | 100% | finish no earlier than 2015-08-07 |
| 7 | 1.6 | mrpt-navigation |  | 5d | 2015-08-10 A | 2015-08-17 A | 6 | 100% | start no earlier than 2015-08-10 |
| 8 | 1.7 | chassis-remake |  | 5d | 2015-08-17 A | 2015-08-24 A |  | 100% | start no earlier than 2015-08-17 |
| 9 | 1.8 | mrpt-recovery |  | 6d | 2015-08-17 A | 2015-08-25 A | 7 | 100% | start no earlier than 2015-08-17 |
| 10 | 2 | **lidar_ros** |  | 42.88d | 2015-08-20 A | 2015-10-16 A |  | 100% |  |
| 11 | 2.1 | ros-tutorial |  | 6d | 2015-08-20 A | 2015-08-28 A |  | 100% | finish no earlier than 2015-08-27 |
| 12 | 2.2 | hokuyo_urg |  | 2d | 2015-08-28 A | 2015-09-01 A | 11 | 100% | start no earlier than 2015-08-27 |
| 13 | 2.3 | hector_slam |  | 3d | 2015-08-31 A | 2015-09-03 A |  | 100% | finish no earlier than 2015-09-02 |
| 14 | 2.4 | hector_navigation |  | 4d | 2015-09-01 A | 2015-09-06 A |  | 100% | finish no earlier than 2015-09-06 |
| 15 | 2.5 | joystick |  | 5d | 2015-09-01 A | 2015-09-07 A |  | 100% | finish no earlier than 2015-09-06 |
| 16 | 2.6 | navigation |  | 2d | 2015-09-06 A | 2015-09-08 A |  | 100% | finish no earlier than 2015-09-08 |
| 17 | 2.7 | noise_filter |  | 2d | 2015-09-08 A | 2015-09-10 A |  | 100% | start no earlier than 2015-09-08 |
| 18 | 2.8 | costmap_obstacle |  | 2d | 2015-09-11 A | 2015-09-14 A | 17 | 100% | finish no earlier than 2015-09-14 |
| 19 | 2.9 | map_server |  | 4d | 2015-09-15 A | 2015-09-18 A | 18 | 100% |  |
| 20 | 2.10 | rviz_plugin |  | 6d | 2015-09-21 A | 2015-09-28 A | 19 | 100% |  |
| 21 | 2.11 | timing_check |  | 5d | 2015-09-18 A | 2015-09-25 A |  | 100% | start no earlier than 2015-09-18 |
| 22 | 2.12 | amcl_kidnap |  | 9d | 2015-09-29 A | 2015-10-09 A | 20 | 100% |  |
| 23 | 2.13 | exploration |  | 9d | 2015-09-29 A | 2015-10-09 A | 20 | 100% |  |
| 24 | 2.14 | code_management |  | 5d | 2015-10-12 A | 2015-10-16 A | 23 | 100% | start no earlier than 2015-09-08 |
| 25 | 3 | mwcs-shanghai-2015 | milestone | 0d | 2015-11-03 A | 2015-11-03 A |  | 100% | start no earlier than 2015-11-03 |

Notes:
- 2: 测试UWB定位性能
- 3: 查阅北阳激光扫描测距仪资料
- 4: 配置网络和通信协议
- 5: 查阅mrpt资料并编译mrpt库 / 发现mrpt库中的几个bug…… / 测试lidar相关的example和tutorial程序
- 6: 实现mrpt的icp-slam算法 / 又发现mrpt库中的bug！ / 编程修改之
- 7: 编程实现holonomic的local_navigation效果尚可 / 编程测试a_star的global_planner效果欠佳
- 8: 修改底盘从全向轮改为差分轮
- 9: 恢复重建mrpt的mapping功能等 / 综合测试
- 11: 安装并查阅linux和ros平台的资料
- 12: 实现在ros平台上与激光雷达的连接
- 13: 用hector-slam取代原有的icp-slam算法 / 完成了小车的网络通信和串口通信两种方式
- 14: 配置了navigation和exploration/ 编程修改了一个关于createTimer的多线程bug
- 15: 编写改进手柄控制的驱动
- 16: 实现全局导航与局部导航功能
- 17: 激光粒子去噪
- 18: 优化成本地图的避障算法
- 19: 地图边走边创建，地图充电原点，小车位置记录，按钮与命令衔接
- 20: ros/rviz显示操作的插件 / 实现按钮控制发送topic以及调用service
- 21: 时序和时间测试
- 22: 用amcl的monte_carlo定位来恢复机器人绑架问题 / failed!
- 23: 探索与自主建图 / 实现同时导航与建图的功能
- 24: 代码整理，把各种类型的.launch文件一起通过环境变量整合到svn服务器。
- 25: 上海工博会

| ID | WBS | Task | Type | Duration | Start | Finish | Predecessors | Complete | Constraint |
| --- | --- | --- | --- | --- | --- | --- | --- | --- | --- |
| 26 | 4 | **chassis_ros** |  | 51d | 2015-09-18 A | 2015-11-30 A |  | 100% |  |
| 27 | 4.1 | design_and_assembly |  | 4d | 2015-09-18 A | 2015-09-24 A |  | 100% | start no earlier than 2015-09-18 |
| 28 | 4.2 | glass_detection |  | 5d | 2015-09-21 A | 2015-09-28 A |  | 100% | start no earlier than 2015-09-21 |
| 29 | 4.3 | kidnap_rescue |  | 15d | 2015-10-12 A | 2015-10-30 A | 22 | 100% |  |
| 30 | 4.4 | control_protocol |  | 10d | 2015-11-02 A | 2015-11-13 A | 29 | 100% |  |
| 31 | 4.5 | system_testing |  | 20d | 2015-10-19 A | 2015-11-16 A |  | 100% | start no earlier than 2015-10-19 |
| 32 | 4.6 | document_release |  | 10d | 2015-11-16 A | 2015-11-30 A | 31, 30 | 100% |  |
| 33 | 5 | sr_show-shanghai-2015 | milestone | 0d | 2015-12-10 A | 2015-12-10 A |  | 100% | start no earlier than 2015-11-03 |
| 34 | 6 | **extent_ros** |  | 40d | 2015-11-30 A | 2016-01-25 A | 26 | 100% |  |
| 35 | 6.1 | sr_show_warmup |  | 10d | 2015-11-30 A | 2015-12-14 A |  | 100% | finish no earlier than 2015-12-09 |
| 36 | 6.2 | mapping_2.5D |  | 5d | 2015-11-30 A | 2015-12-07 A |  | 100% |  |
| 37 | 6.3 | servo_odometry |  | 5d | 2015-12-14 A | 2015-12-18 A | 35, 36 | 100% |  |
| 38 | 6.4 | imu_odometry |  | 3d | 2015-12-21 A | 2015-12-24 A | 37 | 100% |  |
| 39 | 6.5 | hall_odometry |  | 6d | 2015-12-24 A | 2016-01-01 A | 38 | 100% |  |
| 40 | 6.6 | pose_follower |  | 13d | 2016-01-01 A | 2016-01-20 A | 39 | 100% |  |
| 41 | 6.7 | rviz_serial |  | 10d | 2015-11-30 A | 2015-12-14 A |  | 100% |  |
| 42 | 6.8 | rviz_socket |  | 10d | 2015-12-14 A | 2015-12-28 A | 41 | 100% |  |
| 43 | 6.9 | rviz_html5 |  | 20d | 2015-12-28 A | 2016-01-25 A | 42 | 100% |  |
| 44 | 7 | ces-lasvagas-2016 | milestone | 0d | 2015-11-30 A | 2016-01-06 A |  | 100% | start no earlier than 2015-11-03 |
| 45 | 8 | caesar-lasvagas-2016 | milestone | 0d | 2015-11-30 A | 2016-02-07 A |  | 100% | start no earlier than 2015-11-03 |
| 46 | 9 | **outdoor_ros** |  | 91d | 2016-01-01 A | 2016-05-06 A | 39 | 100% |  |
| 47 | 9.1 | octomap_mapping |  | 5d | 2016-01-01 A | 2016-01-08 A |  | 100% |  |
| 48 | 9.2 | lidar_skeleton |  | 10d | 2016-01-20 A | 2016-02-03 A | 40 | 100% | start no earlier than 2015-09-29 |
| 49 | 9.3 | chassis_assembly |  | 9d | 2016-01-25 A | 2016-02-05 A | 43 | 100% | start no earlier than 2015-09-29 |
| 50 | 9.4 | web_tools |  | 10d | 2016-02-14 A | 2016-02-26 A |  | 100% | start no earlier than 2016-02-14 |
| 51 | 9.5 | people_tracker |  | 20d | 2016-02-26 A | 2016-03-25 A | 50 | 100% |  |
| 52 | 9.6 | slam_tilt |  | 20d | 2016-03-25 A | 2016-04-22 A | 51 | 100% | start no earlier than 2015-09-29 |
| 53 | 9.7 | omni_wheels |  | 10d | 2016-04-22 A | 2016-05-06 A |  | 100% | start no earlier than 2015-10-27 |

Notes:
- 27: 小车设计组装
- 28: 玻璃探测
- 29: 机器人绑架问题用amcl有困难；转而指向了全局定位问题。
- 30: 与控制板的通信协议
- 31: 系统测试 / 要写测试用例
- 32: 编写项目文档
- 33: 上海服务机器人展
- 35: 展会准备，测试工作
- 36: 多探头的2.5D维建图
- 37: 伺服电机编码反馈
- 38: 惯性导航速度加速度反馈 / hector_localization
- 39: 用霍尔传感器发布里程计数据
- 40: 激光跟随
- 41: 通信协议
- 42: 通信协议
- 43: 通信协议
- 44: 上海服务机器人展
- 45: 酒店新年活动
- 47: 八叉树slam定位建图
- 48: 倾斜与斜向定位建图
- 49: 底盘安装
- 50: 基本网页控制
- 51: 人物跟随
- 52: 倾斜与斜向定位建图
- 53: 全向轮

| ID | WBS | Task | Type | Duration | Start | Finish | Predecessors | Complete | Remaining | Total slack | Free slack | Constraint | Resources | Work | Actual work | 任务 |
| --- | --- | --- | --- | --- | --- | --- | --- | --- | --- | --- | --- | --- | --- | --- | --- | --- |
| 54 | 10 | **maintenance** |  | 60d | 2016-05-06 A | 2016-07-29 A | 46 | 100% |  |  |  |  |  |  |  |  |
| 55 | 10.1 | release-1.1.1.1_beta |  | 10d | 2016-05-06 A | 2016-05-20 A |  | 100% |  |  |  |  |  |  |  |  |
| 56 | 10.2 | imu_ekf |  | 20d | 2016-05-20 A | 2016-06-17 A | 55 | 100% |  |  |  |  |  |  |  |  |
| 57 | 10.3 | release-1.1.1.3_beta |  | 10d | 2016-06-17 A | 2016-07-01 A | 56 | 100% |  |  |  |  |  |  |  |  |
| 58 | 10.4 | html5_websocket |  | 15d | 2016-07-01 A | 2016-07-22 A | 57 | 100% |  |  |  |  |  |  |  |  |
| 59 | 10.5 | clear_costmap_recovery |  | 4d | 2016-07-25 A | 2016-07-29 A | 58 | 100% |  |  |  |  |  |  |  |  |
| 60 | 11 | pokemon go | milestone | 0d | 2016-08-01 A | 2016-08-01 A |  | 100% |  |  |  | start no earlier than 2016-07-25 |  |  |  |  |
| 61 | 12 | **lidar_forklift** |  | 60.25d? | 2016-08-01 A | 2016-10-24 | 60 | 21% | 47.62d? | 0d |  |  | 仇隽挺; 陈新春; 张邺; 韩立芹; 陈豪 | 3402h | 483h | 激光叉车项目 |
| 62 | 12.1 | plc_controller |  | 6d | 2016-08-01 A | 2016-08-09 A |  | 100% |  |  |  |  | 陈新春; 仇隽挺 | 96h | 96h | 调试PLC控制器 |
| 63 | 12.2 | cable_structure |  | 7d? | 2016-08-09 A | 2016-08-18 | 62 | 75% | 1.75d? | 0d |  |  | 仇隽挺; 张邺 | 112h | 84h | 重新接线结构 |
| 64 | 12.3 | drive_aqmd |  | 7d? | 2016-08-09 A | 2016-08-25 | 59, 63 | 25% | 5.25d? | 0d |  |  | 仇隽挺; 张邺 | 112h | 28h | 调试驱动器 |
| 65 | 12.4 | hector_mapping |  | 7d? | 2016-08-25 | 2016-09-05 | 64 |  |  | 0d |  |  | 张邺; 仇隽挺 | 112h |  | hector建图 |
| 66 | 12.5 | teb_local_planner |  | 7d? | 2016-09-05 | 2016-09-14 | 65 |  |  | 0d |  |  | 韩立芹; 张邺 | 112h |  | 本地路径规划 |
| 67 | 12.6 | robot_localization |  | 7d? | 2016-09-14 | 2016-09-23 | 66 |  |  | 0d |  |  | 韩立芹; 张邺 | 112h |  | 多传感器定位 |
| 68 | 12.7 | lift_testing |  | 7d? | 2016-09-23 | 2016-10-04 | 67 |  |  | 0d |  |  | 陈豪; 仇隽挺 | 112h |  | 叉齿升降测试 |
| 69 | 12.8 | navigation_testing |  | 14d? | 2016-10-04 | 2016-10-24 | 68 |  |  | 0d |  |  | 陈豪; 仇隽挺 | 224h |  | 导航初步调试 |
| 70 | 13 | **ros_org** |  | 29d? | 2016-08-01 A | 2016-09-09 | 60 | 31% | 19.92d? | 31.25d |  |  | 陈新春; 仇隽挺; 韩立芹; 陆亚辉; 潘力澜; 张邺 | 2424h | 398h |  |
| 71 | 13.1 | github_remote_update |  | 11d | 2016-08-01 A | 2016-08-31 A |  | 100% |  |  |  |  | 韩立芹; 张邺 | 88h | 88h | 远程更新 |
| 72 | 13.2 | rosbridge_tcp |  | 2d | 2016-08-01 A | 2016-08-17 A | 71 | 100% |  |  |  |  | 张邺; 韩立芹 | 24h | 24h | 协议层通信 |
| 73 | 13.3 | system_diagnostics |  | 7d? | 2016-08-17 A | 2016-08-26 | 72 | 50% | 3.5d? | 41.25d |  |  | 韩立芹; 张邺 | 112h | 56h | 系统自检 |
| 74 | 13.4 | qt_bridge |  | 14d? | 2016-08-01 A | 2016-08-19 |  | 25% | 10.5d? | 46.25d |  |  | 韩立芹; 张邺 | 224h | 56h | 调度系统衔接 |
| 75 | 13.5 | velocity_smooth |  | 14d? | 2016-08-01 A | 2016-08-19 |  | 25% | 10.5d? | 46.25d |  |  | 韩立芹; 张邺 | 224h | 56h | 速度平滑 |
| 76 | 13.6 | velocity_follow |  | 1d? | 2016-08-01 | 2016-08-02 |  |  |  | 59.25d |  |  |  |  |  | 速度跟随 |
| 77 | 13.7 | velocity_filter |  | 1d? | 2016-08-01 | 2016-08-02 |  |  |  | 59.25d |  |  |  |  |  | 速度滤波 |
| 78 | 13.8 | chassis_qiuqiu |  | 3d | 2016-08-01 A | 2016-08-04 A |  | 100% |  |  |  |  | 陆亚辉; 仇隽挺 | 48h | 48h | 改进仇仇号 |
| 79 | 13.9 | visual_odometry |  | 7d? | 2016-08-01 A | 2016-08-10 |  | 75% | 1.75d? | 53.25d |  |  | 潘力澜 | 56h | 42h | 视觉里程计 |
| 80 | 13.10 | speech_commands |  | 7d? | 2016-08-04 A | 2016-08-15 | 78 | 25% | 5.25d? | 50.25d |  |  | 陈新春; 陆亚辉 | 112h | 28h | 语音指令 |
| 81 | 13.11 | speech_recognition |  | 1d? | 2016-08-01 | 2016-08-02 |  |  |  | 59.25d |  |  |  |  |  | 语音识别 |
| 82 | 13.12 | speech_semantic |  | 1d? | 2016-08-01 | 2016-08-02 |  |  |  | 59.25d |  |  |  |  |  | 语义解析 |
| 83 | 13.13 | speech_tts |  | 1d? | 2016-08-01 | 2016-08-02 |  |  |  | 59.25d |  |  |  |  |  | 语音合成 |
| 84 | 13.14 | drive_aqmd |  | 7d? | 2016-08-31 | 2016-09-09 | 78, 71 |  |  | 31.25d |  |  | 潘力澜; 张邺 | 112h |  | 艾思控驱动器 |
| 85 | 13.15 | drive_hinson |  | 1d? | 2016-08-01 | 2016-08-02 |  |  |  | 59.25d |  |  |  |  |  | 兴颂驱动器 |
| 86 | 13.16 | drive_servo |  | 1d? | 2016-08-01 | 2016-08-02 |  |  |  | 59.25d |  |  |  |  |  | 某伺服驱动器 |
| 87 | 13.17 | lidar_noise |  | 1d? | 2016-08-01 | 2016-08-02 |  |  |  | 59.25d |  |  | 仇隽挺; 韩立芹 | 16h |  | 激光反射噪声 |
| 88 | 13.18 | skeleton_detection |  | 1d? | 2016-08-01 | 2016-08-02 |  |  |  | 59.25d |  |  |  |  |  | 骨架识别 |
| 89 | 13.19 | face_detection |  | 1d? | 2016-08-01 | 2016-08-02 |  |  |  | 59.25d |  |  |  |  |  | 人脸识别 |
| 90 | 13.20 | leg_detection |  | 1d? | 2016-08-01 | 2016-08-02 |  |  |  | 59.25d |  |  |  |  |  | 人腿识别 |
| 91 | 13.21 | chassis_dahui |  | 1d? | 2016-08-01 | 2016-08-02 |  |  |  | 58.25d | 2d |  |  |  |  | 改进大灰号 |
| 92 | 13.22 | terminal_architecture |  | 1d? | 2016-08-01 | 2016-08-02 |  |  |  | 59.25d |  |  |  |  |  | 通信架构设计 |
| 93 | 13.23 | terminal_controller |  | 1d? | 2016-08-04 | 2016-08-05 | 78, 91 |  |  | 56.25d |  |  | 陈新春; 张邺 | 16h |  | 操控终端 |
| 94 | 13.24 | terminal_navigator |  | 1d? | 2016-08-01 | 2016-08-02 |  |  |  | 59.25d |  |  |  |  |  | 导航终端 |
| 95 | 13.25 | terminal_configurator |  | 1d? | 2016-08-01 | 2016-08-02 |  |  |  | 59.25d |  |  |  |  |  | 配置终端 |
| 96 | 13.26 | power_protection |  | 1d? | 2016-08-01 | 2016-08-02 |  |  |  | 59.25d |  |  |  |  |  | 电源与空气开关 |
| 97 | 13.27 | chassis_dapan |  | 1d? | 2016-08-01 | 2016-08-02 |  |  |  | 59.25d |  |  |  |  |  | 改进大潘号 |
| 98 | 13.28 | motor_braker |  | 1d? | 2016-08-01 | 2016-08-02 |  |  |  | 59.25d |  |  |  |  |  | 电机刹车 |
| 99 | 13.29 | sensor_bumper |  | 1d? | 2016-08-01 | 2016-08-02 |  |  |  | 59.25d |  |  |  |  |  | 碰撞传感器 |
| 100 | 13.30 | sensor_sonar |  | 1d? | 2016-08-01 | 2016-08-02 |  |  |  | 59.25d |  |  |  |  |  | 声纳传感器 |
| 101 | 13.31 | sensor_infrared |  | 1d? | 2016-08-01 | 2016-08-02 |  |  |  | 59.25d |  |  |  |  |  | 红外传感器 |
| 102 | 13.32 | rplidar |  | 1d? | 2016-08-01 | 2016-08-02 |  |  |  | 59.25d |  |  |  |  |  |  |
| 103 | 13.33 | delidar |  | 1d? | 2016-08-01 | 2016-08-02 |  |  |  | 59.25d |  |  |  |  |  |  |
| 104 | 13.34 | velodyne |  | 1d? | 2016-08-01 | 2016-08-02 |  |  |  | 59.25d |  |  |  |  |  |  |
| 105 | 13.35 | orbmap |  | 1d? | 2016-08-01 | 2016-08-02 |  |  |  | 59.25d |  |  |  |  |  |  |
| 106 | 13.36 | rtabmap |  | 1d? | 2016-08-01 | 2016-08-02 |  |  |  | 59.25d |  |  |  |  |  |  |
| 107 | 13.37 | pcl |  | 1d? | 2016-08-01 | 2016-08-02 |  |  |  | 59.25d |  |  |  |  |  |  |
| 108 | 13.38 | map_input |  | 1d? | 2016-08-01 | 2016-08-02 |  |  |  | 59.25d |  |  |  |  |  |  |
| 109 | 13.39 | fall_prevention |  | 1d? | 2016-08-01 | 2016-08-02 |  |  |  | 59.25d |  |  |  |  |  | 防跌落方案 |
| 110 | 13.40 | emergency_break |  | 1d? | 2016-08-01 | 2016-08-02 |  |  |  | 59.25d |  |  |  |  |  |  |
| 111 | 13.41 | global_localization |  | 1d? | 2016-08-01 | 2016-08-02 |  |  |  | 59.25d |  |  |  |  |  |  |
| 112 | 13.42 | map_editor |  | 1d? | 2016-08-01 | 2016-08-02 |  |  |  | 59.25d |  |  |  |  |  | 地图编辑功能 |
| 113 | 13.43 | map_multi_layers |  | 1d? | 2016-08-01 | 2016-08-02 |  |  |  | 59.25d |  |  |  |  |  | 多地图结合 |
| 114 | 13.44 | use_elevator |  | 1d? | 2016-08-01 | 2016-08-02 |  |  |  | 59.25d |  |  |  |  |  | 进电梯 |

Notes:
- 59: 导航global_plan规划失败后后清除obstacle_layer的障碍继续尝试。
- 73: 联网的无线有线优先级；激光安装不平；imu安装不稳……
- 87: 激光干扰导致机器人导航卡住，具体原因有待继续检查下去，目前没有解决方案。

| ID | WBS | Task | Duration | Start | Finish | Predecessors | Total slack |
| --- | --- | --- | --- | --- | --- | --- | --- |
| 115 | 14 | **multi_robots** | 1d? | 2015-11-30 | 2015-12-01 | 26 | 235.25d |
| 116 | 14.1 | <新任务> | 1d? | 2015-11-30 | 2015-12-01 |  | 235.25d |
| 117 | 15 | **auto_docking** | 1d? | 2015-11-30 | 2015-12-01 | 26 | 235.25d |
| 118 | 15.1 | <新任务> | 1d? | 2015-11-30 | 2015-12-01 |  | 235.25d |

Notes:
- 115: 多机器人协同调度策略
- 117: 自主充电
